# T2_PROJECT

Schedule from MS Project, 2017-02-14 to 2017-05-19, costs in €.
GPE

## Calendars

- Standard: Mon-Fri 08:00-12:00, 13:00-17:00; Sat-Sun off.

## Resources

| Resource | Group | Rate |
| --- | --- | --- |
| Eng. Rad. 1 | Rad. D. | 90 |
| Manager | Manager D. | 120 |
| Marketer | Marketing D. | 60 |
| Sales Guy | Buying D. | 60 |
| Law Guy | Law D. | 90 |
| Regulation Guy | Reg. D. | 60 |
| Constructor | Constructions |  |
| Antennas |  | 17500 |
| Eletrical Cables |  | 6000 |
| Indoor Antennas |  | 6000 |
| Network Cables |  | 2000 |
| Base stations |  | 20000 |
| Satellite Link Supplier | Communications |  |
| Roaming Operators | Communications |  |
| Ship Owner | Owner |  |
| Equipment Suppliers | Constructions |  |
| Mobile Signal Amplifier |  | 150 |

## Schedule

| ID | WBS | Task | Type | Duration | Start | Finish | Predecessors | Total slack | Free slack | Constraint | Deadline | Resources | Work | Cost |
| --- | --- | --- | --- | --- | --- | --- | --- | --- | --- | --- | --- | --- | --- | --- |
| 1 | 1 | **Initiation Phase** |  | 1.12d | 2017-02-14 08:00 | 2017-02-15 09:00 |  | 0d |  | start no earlier than 2017-02-14 08:00 | 2017-05-22 17:00 |  | 19h | 1,830 |
| 2 | 1.1 | Project Initialisation | milestone | 0d | 2017-02-14 08:00 | 2017-02-14 08:00 |  | 0d |  |  |  |  |  |  |
| 3 | 1.2 | **Requirements** |  | 1d | 2017-02-14 08:00 | 2017-02-14 17:00 | 2 | 0d |  |  |  |  | 17h | 1,650 |
| 4 | 1.2.1 | Meeting with the ship's owner |  | 2.5h | 2017-02-14 08:00 | 2017-02-14 10:30 | 2 | 0d |  |  |  | Eng. Rad. 1; Marketer; Manager | 7.5h | 675 |
| 5 | 1.2.2 | Briefing and Task division |  | 30min | 2017-02-14 10:30 | 2017-02-14 11:00 | 4 | 0d |  |  |  | Manager; Eng. Rad. 1; Marketer | 1.5h | 135 |
| 6 | 1.2.3 | Bill of Materials |  | 4h | 2017-02-14 13:00 | 2017-02-14 17:00 | 5FS+1h | 67.59d | 0.38d |  |  | Eng. Rad. 1; Manager | 8h | 840 |
| 7 | 1.3 | Stakeholder identification |  | 1h | 2017-02-15 08:00 | 2017-02-15 09:00 | 3 | 68.88d |  |  |  | Manager; Marketer | 2h | 180 |
| 8 | 2 | **Planning Phase** |  | 37.09d | 2017-02-15 11:00 | 2017-04-07 11:45 | 5FS+1d | 0d |  |  |  |  | 254h | 25,672.5 |
| 9 | 2.1 | **Materials** |  | 0.25d | 2017-02-15 11:00 | 2017-02-15 14:00 | 6 | 67.22d |  |  |  |  | 2h | 120 |
| 10 | 2.1.1 | Supplier identification |  | 2h | 2017-02-15 11:00 | 2017-02-15 14:00 | 6 | 67.22d |  |  |  | Sales Guy | 2h | 120 |
| 11 | 2.2 | **Visit to locations** |  | 3.03d | 2017-02-15 11:00 | 2017-02-20 11:15 |  | 0d |  |  |  |  | 8.25h | 742.5 |
| 12 | 2.2.1 | Possible locations |  | 3h | 2017-02-15 11:00 | 2017-02-15 15:00 |  | 0d |  |  |  | Eng. Rad. 1 | 3h | 270 |
| 13 | 2.2.2 | Inspection authorization |  | 15min | 2017-02-15 15:00 | 2017-02-15 15:15 | 12 | 0d |  |  |  | Eng. Rad. 1 | 0.25h | 22.5 |
| 14 | 2.2.3 | Wait for authorization |  | 2d | 2017-02-15 15:15 | 2017-02-17 15:15 | 13 | 0d |  |  |  |  |  |  |
| 15 | 2.2.4 | Visit the location |  | 5h | 2017-02-17 15:15 | 2017-02-20 11:15 | 14 | 0d |  |  |  | Eng. Rad. 1 | 5h | 450 |
| 16 | 2.3 | Locations priority list |  | 1h | 2017-02-20 11:15 | 2017-02-20 13:15 | 11 | 64.31d |  |  |  | Eng. Rad. 1 | 1h | 90 |
| 17 | 2.4 | **Negotiations** |  | 4.53d | 2017-02-21 11:15 | 2017-02-27 16:30 | 11FS+1d | 0d |  |  |  | Manager; Eng. Rad. 1 | 72.5h | 7,612.5 |
| 18 | 2.4.1 | Meeting scheduling |  | 15min | 2017-02-21 11:15 | 2017-02-21 11:30 |  | 0d |  |  |  |  |  |  |
| 19 | 2.4.2 | Waiting for meeting |  | 4d | 2017-02-21 11:30 | 2017-02-27 11:30 | 18 | 0d |  |  |  |  |  |  |
| 20 | 2.4.3 | Meeting |  | 4h | 2017-02-27 11:30 | 2017-02-27 16:30 | 19 | 0d |  |  |  |  |  |  |
| 21 | 2.4.4 | Negotiations | milestone | 0d | 2017-02-27 16:30 | 2017-02-27 16:30 | 20 | 0d |  |  |  |  |  |  |
| 22 | 2.5 | **Constructor allocation** |  | 9.75d | 2017-02-28 16:30 | 2017-03-14 14:30 | 21FS+1d | 0d |  |  |  |  | 34h | 3,060 |
| 23 | 2.5.1 | Construction plan |  | 5h | 2017-02-28 16:30 | 2017-03-01 13:30 |  | 0d |  |  |  |  |  |  |
| 24 | 2.5.2 | Proposals incoming |  | 7d | 2017-03-01 13:30 | 2017-03-10 13:30 | 23 | 0d |  |  |  |  |  |  |
| 25 | 2.5.3 | Proposals negociation |  | 2d | 2017-03-10 13:30 | 2017-03-14 13:30 | 24 | 0d |  |  |  | Manager; Sales Guy | 32h | 2,880 |
| 26 | 2.5.4 | Constructor choice |  | 1h | 2017-03-14 13:30 | 2017-03-14 14:30 | 25 | 0d |  |  |  | Manager; Sales Guy | 2h | 180 |

| ID | WBS | Task | Type | Duration | Start | Finish | Predecessors | Total slack | Resources | Work | Cost |
| --- | --- | --- | --- | --- | --- | --- | --- | --- | --- | --- | --- |
| 27 | 2.6 | **Contract** |  | 3.16d | 2017-03-15 14:30 | 2017-03-20 15:45 | 22FS+1d | 0d | Law Guy; Manager | 50.5h | 5,302.5 |
| 28 | 2.6.1 | Meeting scheduling |  | 15min | 2017-03-15 14:30 | 2017-03-15 14:45 |  | 0d |  |  |  |
| 29 | 2.6.2 | Waiting for meeting |  | 3d | 2017-03-15 14:45 | 2017-03-20 14:45 | 28 | 0d |  |  |  |
| 30 | 2.6.3 | Suppliers |  | 1h | 2017-03-20 14:45 | 2017-03-20 15:45 | 29 | 0d |  |  |  |
| 31 | 2.6.4 | Constructor |  | 1h | 2017-03-20 14:45 | 2017-03-20 15:45 | 29 | 0d |  |  |  |
| 32 | 2.7 | Energy project |  | 3d | 2017-03-21 15:45 | 2017-03-24 15:45 | 27FS+1d | 0d | Manager [50%]; Eng. Rad. 1; Sales Guy | 28h | 2,640 |
| 33 | 2.8 | Link project |  | 3d | 2017-03-27 15:45 | 2017-03-31 11:45 | 32FS+1d | 0d | Eng. Rad. 1; Manager [50%]; Sales Guy | 25.75h | 2,265 |
| 34 | 2.9 | **Roaming agreement** |  | 4d | 2017-04-03 11:45 | 2017-04-07 11:45 | 33FS+1d | 0d |  | 32h | 3,840 |
| 35 | 2.9.1 | Meeting with satellite link supplier |  | 1d | 2017-04-03 11:45 | 2017-04-04 11:45 |  | 0d | Manager | 8h | 960 |
| 36 | 2.9.2 | Agreement's negotiations |  | 3d | 2017-04-04 11:45 | 2017-04-07 11:45 | 35 | 0d | Manager | 24h | 2,880 |
| 37 | 3 | **Execution Phase** |  | 24.88d | 2017-04-10 11:45 | 2017-05-15 10:45 | 34FS+1d | 0d |  | 205.75h | 68,577.5 |
| 38 | 3.1 | Conform Analysis |  | 1d | 2017-04-10 11:45 | 2017-04-11 11:45 | 36FS+1d | 0d | Regulation Guy; Eng. Rad. 1 | 16h | 1,200 |
| 39 | 3.2 | **Technical Minutes** |  | 5.62d | 2017-04-12 11:45 | 2017-04-20 08:45 | 38FS+1d | 0d | Eng. Rad. 1 | 45h | 4,050 |
| 40 | 3.2.1 | Meeting |  | 1h | 2017-04-12 11:45 | 2017-04-12 13:45 |  | 0d |  |  |  |
| 41 | 3.2.2 | Informing of technical minutes |  | 30min | 2017-04-12 13:45 | 2017-04-12 14:15 | 40 | 27.19d |  |  |  |
| 42 | 3.2.3 | Material order |  | 2h | 2017-04-12 13:45 | 2017-04-12 15:45 | 40 | 0d |  |  |  |
| 43 | 3.2.4 | Waiting for material |  | 1w | 2017-04-12 15:45 | 2017-04-19 15:45 | 42 | 0d |  |  |  |
| 44 | 3.2.5 | Checking material |  | 2h | 2017-04-19 15:45 | 2017-04-20 08:45 | 43 | 21.75d |  |  |  |
| 45 | 3.3 | **Implementation study** |  | 1d | 2017-04-19 15:45 | 2017-04-20 15:45 | 43 | 0d | Eng. Rad. 1 | 8h | 720 |
| 46 | 3.3.1 | Visiting locations with constructor |  | 5h | 2017-04-19 15:45 | 2017-04-20 11:45 | 43 | 0d |  |  |  |
| 47 | 3.3.2 | Study |  | 3h | 2017-04-20 11:45 | 2017-04-20 15:45 | 46 | 0d |  |  |  |
| 48 | 3.4 | **Radio Configuration** |  | 1d | 2017-04-21 15:45 | 2017-04-24 15:45 | 45FS+1d | 0d | Eng. Rad. 1 | 4.75h | 427.5 |
| 49 | 3.4.1 | Pre-Construction | milestone | 0d | 2017-04-21 15:45 | 2017-04-21 15:45 | 47FS+1d | 0d |  |  |  |
| 50 | 3.4.2 | Configuration |  | 1d | 2017-04-21 15:45 | 2017-04-24 15:45 | 49 | 0d |  |  |  |
| 51 | 3.5 | Construction | milestone | 1w | 2017-04-25 15:45 | 2017-05-02 15:45 | 50FS+1d | 0d | Eng. Rad. 1; Sales Guy; Antennas; Base stations; Eletrical Cables; Network Cables; Indoor Antennas | 80h | 57,500 |
| 52 | 3.6 | Connectivity study |  | 2.5d | 2017-05-03 15:45 | 2017-05-08 10:45 | 51FS+1d | 0d | Eng. Rad. 1 | 20h | 1,800 |

| ID | WBS | Task | Type | Duration | Start | Finish | Predecessors | Total slack | Resources | Work | Cost |
| --- | --- | --- | --- | --- | --- | --- | --- | --- | --- | --- | --- |
| 53 | 3.7 | **Testing** |  | 4d | 2017-05-09 10:45 | 2017-05-15 10:45 | 52FS+1d | 0d | Eng. Rad. 1 | 32h | 2,880 |
| 54 | 3.7.1 | Integration and Test |  | 4d | 2017-05-09 10:45 | 2017-05-15 10:45 |  | 0d |  |  |  |
| 55 | 4 | **Closing Phase** |  | 4.5d | 2017-05-15 10:45 | 2017-05-19 15:45 | 53 | 0d | Manager | 36h | 4,320 |
| 56 | 4.1 | Report writing |  | 3d | 2017-05-15 10:45 | 2017-05-18 10:45 | 53 | 0d |  |  |  |
| 57 | 4.2 | Final meeting |  | 4h | 2017-05-19 10:45 | 2017-05-19 15:45 | 56FS+1d | 0d |  |  |  |
| 58 | 4.3 | Project Conclusion | milestone | 0d | 2017-05-19 15:45 | 2017-05-19 15:45 | 57 | 0d |  |  |  |
